# Biobank2

How a schedule from Planner changed from version to version. A marks actual dates.

## Version 1 (saved 2009-05-16)

Note of the change: project plan

| ID | WBS | Task | Start | Finish | Predecessors |
| --- | --- | --- | --- | --- | --- |
| 1 |  | Finish current forms | 2009-05-19 | 2009-05-25 |  |
| 2 |  | datamatrix decoding library | 2009-05-26 | 2009-06-08 | 1 |
| 3 |  | Export data from BBPDB and import to Biobank2 | 2009-06-09 | 2009-06-29 | 2 |
| 4 |  | parse xml for possible servers | 2009-06-30 | 2009-06-30 | 3 |
| 5 |  | Log out when no activity detected on java client | 2009-07-01 | 2009-07-01 | 4 |
| 6 |  | cascade settings | 2009-07-02 | 2009-07-08 | 5 |
| 7 |  | enable logging capability | 2009-07-09 | 2009-07-15 | 6 |
| 8 |  | Unit and feature test suite | 2009-07-16 | 2009-07-29 | 7 |
| 9 |  | update button for view forms | 2009-05-19 | 2009-05-19 |  |
| 10 | 10 | **scanner integration** | 2009-05-20 | 2009-06-23 |  |
| 11 |  | Implement scan link | 2009-05-20 | 2009-06-02 | 9 |
| 12 |  | Implement scan process | 2009-06-03 | 2009-06-09 | 11 |
| 13 |  | Integrate datamatrix decoding library | 2009-06-10 | 2009-06-16 | 2, 12 |
| 14 |  | 1D barcode scanning | 2009-06-17 | 2009-06-23 | 13 |
| 15 |  | java client search feature | 2009-07-01 | 2009-07-14 | 16 |
| 16 |  | hand held scanner integration | 2009-06-24 | 2009-06-30 | 14 |
| 17 | 13 | **CSM user authentication** | 2009-07-15 | 2009-07-16 |  |
| 18 |  | user roles | 2009-07-15 | 2009-07-16 | 15 |

## Version 2 (saved 2009-05-16)

Note of the change: added subsequent software releases

Last finish 2009-07-29 → 2009-11-18 (+112d).

Added:

| ID | Task | Duration | Start | Finish | Predecessors |
| --- | --- | --- | --- | --- | --- |
| 1 | **Version 1.0** |  | 2009-05-19 | 2009-07-29 |  |
| 20 | Version 1.0 Ready | 0d | 2009-07-29 | 2009-07-29 | 18, 1 |
| 21 | **Version 1.1** |  | 2009-07-30 | 2009-09-30 | 20 |
| 22 | Web client data presentation |  | 2009-07-30 | 2009-08-12 |  |
| 23 | Web client search |  | 2009-08-13 | 2009-08-26 | 22 |
| 24 | Model modifications to include orders and distribution |  | 2009-08-27 | 2009-09-02 | 23 |
| 25 | Web Orders |  | 2009-09-03 | 2009-09-09 | 24 |
| 26 | Order distribution |  | 2009-09-10 | 2009-09-16 | 25 |
| 27 | Implement orders and distribution on java client |  | 2009-09-17 | 2009-09-30 | 26 |
| 28 | Version 1.1 Ready | 0d | 2009-09-30 | 2009-09-30 | 21 |
| 29 | **Version 2.0** |  | 2009-10-01 | 2009-11-18 | 28 |
| 30 | Model modifications to include shipping |  | 2009-10-01 | 2009-10-07 |  |
| 31 | Shipment processing |  | 2009-10-08 | 2009-10-21 | 30 |
| 32 | Integrate Robot Arm |  | 2009-10-22 | 2009-11-04 | 31 |
| 33 | Integrate Freezer Robot |  | 2009-11-05 | 2009-11-18 | 32 |
| 34 | Version 2.0 Ready | 0d | 2009-11-18 | 2009-11-18 | 29 |

Changed:

| ID | Task | Finish | Predecessors |
| --- | --- | --- | --- |
| 11 | **scanner integration** | 2009-06-23 → 2009-06-30 (+7d) |  |
| 17 | java client search feature |  | 16 → 11 |

## Version 3 (saved 2009-05-19)

Note of the change: fixed code after model changes

Last finish 2009-11-18 → 2009-11-19 (+1d).

Changed:

| ID | Task | Start | Finish |
| --- | --- | --- | --- |
| 1 | **Version 1.0** |  | 2009-07-29 → 2009-07-30 (+1d) |
| 5 | parse xml for possible servers |  | 2009-06-30 → 2009-07-01 (+1d) |
| 6 | Log out when no activity detected on java client | 2009-07-01 → 2009-07-02 (+1d) | 2009-07-01 → 2009-07-02 (+1d) |
| 7 | cascade settings | 2009-07-02 → 2009-07-03 (+1d) | 2009-07-08 → 2009-07-09 (+1d) |
| 8 | enable logging capability | 2009-07-09 → 2009-07-10 (+1d) | 2009-07-15 → 2009-07-16 (+1d) |
| 9 | Unit and feature test suite | 2009-07-16 → 2009-07-17 (+1d) | 2009-07-29 → 2009-07-30 (+1d) |
| 11 | **scanner integration** |  | 2009-06-30 → 2009-06-24 (-6d) |
| 16 | hand held scanner integration |  | 2009-06-30 → 2009-06-24 (-6d) |
| 17 | java client search feature | 2009-07-01 → 2009-06-25 (-6d) | 2009-07-14 → 2009-07-08 (-6d) |
| 18 | **CSM user authentication** | 2009-07-15 → 2009-07-09 (-6d) | 2009-07-16 → 2009-07-15 (-1d) |
| 19 | user roles | 2009-07-15 → 2009-07-09 (-6d) | 2009-07-16 → 2009-07-15 (-1d) |
| 20 | Version 1.0 Ready | 2009-07-29 → 2009-07-30 (+1d) | 2009-07-29 → 2009-07-30 (+1d) |
| 21 | **Version 1.1** | 2009-07-30 → 2009-07-31 (+1d) | 2009-09-30 → 2009-10-01 (+1d) |
| 22 | Web client data presentation | 2009-07-30 → 2009-07-31 (+1d) | 2009-08-12 → 2009-08-13 (+1d) |
| 23 | Web client search | 2009-08-13 → 2009-08-14 (+1d) | 2009-08-26 → 2009-08-27 (+1d) |
| 24 | Model modifications to include orders and distribution | 2009-08-27 → 2009-08-28 (+1d) | 2009-09-02 → 2009-09-03 (+1d) |
| 25 | Web Orders | 2009-09-03 → 2009-09-04 (+1d) | 2009-09-09 → 2009-09-10 (+1d) |
| 26 | Order distribution | 2009-09-10 → 2009-09-11 (+1d) | 2009-09-16 → 2009-09-17 (+1d) |
| 27 | Implement orders and distribution on java client | 2009-09-17 → 2009-09-18 (+1d) | 2009-09-30 → 2009-10-01 (+1d) |
| 28 | Version 1.1 Ready | 2009-09-30 → 2009-10-01 (+1d) | 2009-09-30 → 2009-10-01 (+1d) |
| 29 | **Version 2.0** | 2009-10-01 → 2009-10-02 (+1d) | 2009-11-18 → 2009-11-19 (+1d) |
| 30 | Model modifications to include shipping | 2009-10-01 → 2009-10-02 (+1d) | 2009-10-07 → 2009-10-08 (+1d) |
| 31 | Shipment processing | 2009-10-08 → 2009-10-09 (+1d) | 2009-10-21 → 2009-10-22 (+1d) |
| 32 | Integrate Robot Arm | 2009-10-22 → 2009-10-23 (+1d) | 2009-11-04 → 2009-11-05 (+1d) |
| 33 | Integrate Freezer Robot | 2009-11-05 → 2009-11-06 (+1d) | 2009-11-18 → 2009-11-19 (+1d) |
| 34 | Version 2.0 Ready | 2009-11-18 → 2009-11-19 (+1d) | 2009-11-18 → 2009-11-19 (+1d) |

## Version 4 (saved 2009-05-21)

Note of the change: fixed Node.getId() to return an Integer

Last finish stays 2009-11-19.

Added:

| ID | Task | Start | Finish | Predecessors |
| --- | --- | --- | --- | --- |
| 18 | java client support for moving containers | 2009-07-09 | 2009-07-22 | 17 |

Changed:

| ID | Task | Start | Finish | Predecessors |
| --- | --- | --- | --- | --- |
| 19 | **CSM user authentication** | 2009-07-09 → 2009-07-23 (+14d) | 2009-07-15 → 2009-07-29 (+14d) |  |
| 20 | user roles | 2009-07-09 → 2009-07-23 (+14d) | 2009-07-15 → 2009-07-29 (+14d) | 17 → 18 |

## Version 5 (saved 2009-05-30)

Note of the change: add user guide for barcode scanner

Last finish stays 2009-11-19. Complete tasks 0 → 1.

Changed:

| ID | Task | Complete |
| --- | --- | --- |
| 10 | update button for view forms | 0% → 100% |
| 12 | Implement scan link | 0% → 60% |
| 13 | Implement scan process | 0% → 40% |

## Version 6 (saved 2009-06-22)

Note of the change: Add preferences page fir hand held scanner configuration

Last finish stays 2009-11-19. Complete tasks 1 → 4.

Changed:

| ID | Task | Complete |
| --- | --- | --- |
| 12 | Implement scan link | 60% → 100% |
| 13 | Implement scan process | 40% → 100% |
| 15 | 1D barcode scanning | 0% → 60% |
| 16 | hand held scanner integration | 0% → 100% |
| 17 | java client search feature | 0% → 10% |
